# G3.0大功率 Device B

Schedule from a web Gantt chart, 2024-06-06 to 2026-03-31.
Every day is a working day

## Schedule

| ID | WBS | Task | Duration | Start | Finish | Predecessors | Complete | Status |
| --- | --- | --- | --- | --- | --- | --- | --- | --- |
| 2 | 1 | Kick off | 5d | 2024-06-06 | 2024-06-10 |  | 100% | done |
| 3 | 2 | MPW 摸底 | 134d | 2024-06-11 | 2024-10-22 | 2 | 100% | done |
| 4 | 3 | **SPW** | 364d | 2025-01-01 | 2025-12-30 |  | 48% |  |
| 5 | 3.1 | Design & Layout | 4d | 2025-01-01 | 2025-01-04 |  |  |  |
| 6 | 3.2 | **Formal Qual** | 174d | 2025-07-10 | 2025-12-30 |  | 49% |  |
| 7 | 3.2.1 | **1st Qaul lot** | 138d | 2025-07-10 | 2025-11-24 |  | 76% |  |
| 8 | 3.2.1.1 | Process | 33d | 2025-07-10 | 2025-08-11 |  | 100% | done |
| 9 | 3.2.1.2 | PKG | 35d | 2025-08-12 | 2025-09-15 | 8 | 100% | done |
| 10 | 3.2.1.3 | FT | 10d | 2025-09-16 | 2025-09-25 | 9 | 100% | done |
| 11 | 3.2.1.4 | **RE验证** | 57d | 2025-09-26 | 2025-11-21 |  | 72% |  |
| 12 | 3.2.1.4.1 | RE168H | 14d | 2025-09-26 | 2025-10-09 | 10 | 100% | done |
| 13 | 3.2.1.4.2 | RE500H | 19d | 2025-10-10 | 2025-10-28 | 12 | 100% | done |
| 14 | 3.2.1.4.3 | RE1008H | 24d | 2025-10-29 | 2025-11-21 | 13 | 33% |  |
| 15 | 3.2.1.5 | AE验证 | 46d | 2025-10-10 | 2025-11-24 | 12 | 30% |  |
| 16 | 3.2.1.6 | Bench test(DS V0.5) | 20d | 2025-10-10 | 2025-10-29 | 12 | 100% | done |
| 17 | 3.2.2 | **2nd&3rd Qual lot** | 65d | 2025-10-27 | 2025-12-30 |  | 4% |  |
| 18 | 3.2.2.1 | FT | 5d | 2025-10-27 | 2025-10-31 |  | 100% | done |
| 19 | 3.2.2.2 | **RE 验证** | 57d | 2025-11-01 | 2025-12-27 |  |  |  |
| 20 | 3.2.2.2.1 | RE168H | 14d | 2025-11-01 | 2025-11-14 | 18 |  |  |
| 21 | 3.2.2.2.2 | RE500H | 19d | 2025-11-15 | 2025-12-03 | 20 |  | waiting |
| 22 | 3.2.2.2.3 | RE1008H | 24d | 2025-12-04 | 2025-12-27 | 21 |  | waiting |
| 23 | 3.2.2.3 | AE验证 | 46d | 2025-11-15 | 2025-12-30 | 20 |  | waiting |
| 24 | 3.2.2.4 | Bench test(DS V0.9) | 15d | 2025-11-15 | 2025-11-29 | 20 |  | waiting |
| 25 | 4 | Ramp up | 90d | 2025-12-28 | 2026-03-27 | 22 |  | waiting |
| 26 | 5 | DS V1.0 | 3d | 2026-03-28 | 2026-03-30 | 25 |  | waiting |
| 27 | 6 | 项目结案 | 1d | 2026-03-31 | 2026-03-31 | 26 |  | waiting |
